# FCMP++/Carrot Plan

Schedule from Planner, 2026-07-22 to 2027-02-23.
The Monero Project

## Calendars

- Default: Mon-Fri 08:00-12:00, 13:00-17:00; Sat-Sun off.

## Schedule

| ID | Task | Duration | Start | Finish | Predecessors | Complete | Constraint | Work |
| --- | --- | --- | --- | --- | --- | --- | --- | --- |
| 1 | Circuit + Gadget Library Audit | 20d | 2026-07-29 | 2026-08-25 |  |  | start no earlier than 2026-07-29 | 160h |
| 2 | FCMP++ Phase 2 audit | 20d | 2026-07-29 | 2026-08-25 |  |  | start no earlier than 2026-07-29 | 160h |
| 3 | FCMP++ Phase 3 audit | 20d | 2026-08-26 | 2026-09-22 | 2 |  |  | 160h |
| 4 | FCMP++ further integretion audit? | 40d | 2026-08-26 | 2026-10-20 | 1 |  |  | 320h |
| 5 | FFI and selene_scalar_from_bytes | 3d | 2026-07-24 | 2026-07-28 |  | 100% | start no earlier than 2026-07-24 | 24h |
| 6 | Curve trees and outputs -> leaves | 3d | 2026-08-12 | 2026-08-14 | 5 |  | start no earlier than 2026-08-12 | 24h |
| 7 | Tower cycle and hash_grow | 3d | 2026-08-17 | 2026-08-19 | 6 |  |  | 24h |
| 8 | point_to_cycle_scalar | 2d | 2026-08-20 | 2026-08-21 | 7 |  |  | 16h |
| 9 | get_tree_extension | 3d | 2026-08-24 | 2026-08-26 | 8 |  |  | 24h |
| 10 | FCMP++ Phase 3 merges | 5d | 2026-08-27 | 2026-09-02 | 9 |  |  | 40h |
| 11 | mx25519 unclamped + other PRs | 2d | 2026-07-22 | 2026-07-23 |  | 100% |  | 16h |
| 12 | Generator T,U,V fix merges | 0.78d | 2026-08-12 | 2026-08-12 |  | 14% | start no earlier than 2026-08-12 | 6.25h |
| 13 | mx25519 merge | 3d | 2026-08-12 | 2026-08-14 | 11 |  | start no earlier than 2026-08-12 | 24h |
| 14 | carrot_core merge | 5d | 2026-08-17 | 2026-08-21 | 12, 13 |  |  | 40h |
| 15 | UkoeHB's carrot_impl review | 2d | 2026-07-27 | 2026-07-28 |  | 100% | start no earlier than 2026-07-27 | 16h |
| 16 | tests_common library | 1d | 2026-07-28 | 2026-07-28 |  | 23% | start no earlier than 2026-07-28 | 8h |
| 17 | carrot_impl merge | 5d | 2026-08-24 | 2026-08-28 | 16, 15, 14 |  |  | 40h |
| 18 | wallet: upstream misc stuff before FCMP++ | 1d | 2026-08-12 | 2026-08-12 |  |  | start no earlier than 2026-08-12 | 8h |
| 19 | carrot-fcmp integration merges | 5d | 2026-08-31 | 2026-09-04 | 18, 17 |  |  | 40h |
| 20 | RandomX v2 + intermediate merge | 5d | 2026-07-22 | 2026-07-28 |  |  |  | 40h |
| 21 | TX relay v2 double-spend debug | 5d | 2026-07-22 | 2026-07-28 |  |  |  | 40h |
| 22 | TX relay v2 merge | 10d | 2026-07-29 | 2026-08-11 | 21 |  |  | 80h |
| 23 | guix: add rust | 5d | 2026-07-22 | 2026-07-28 |  |  |  | 40h |
| 24 | guix: bootstapple FCMP++ | 5d | 2026-07-29 | 2026-08-04 | 23 |  |  | 40h |
| 25 | HF activation merge | 1d | 2026-09-07 | 2026-09-07 | 24, 22, 20, 19, 10 | 22% |  | 8h |
| 26 | Pre-release code freeze | 20d | 2026-09-08 | 2026-10-05 | 25 |  |  | 160h |
| 27 | First HF-enabled binary release | 5d | 2026-10-06 | 2026-10-12 | 26, 25 |  |  | 40h |
| 28 | HF mandatory waiting period | 120d | 2026-09-08 | 2027-02-22 | 25 |  |  | 960h |
| 29 | Circuit + Gadget follow-up dev | 10d | 2026-08-26 | 2026-09-08 | 1 |  |  | 80h |
| 30 | FCMP++ integration follow-up dev | 10d | 2026-10-21 | 2026-11-03 | 3, 4, 29 |  |  | 80h |
| 31 | Follow-up fix binary release | 5d | 2026-11-04 | 2026-11-10 | 30 |  |  | 40h |
| 32 | Trezor HW dev | 90d | 2026-07-22 | 2026-11-24 |  |  |  | 720h |
| 33 | Trezor HW merges | 5d | 2026-11-25 | 2026-12-01 | 32 |  |  | 40h |
| 34 | Ledger HW dev | 90d | 2026-07-22 | 2026-11-24 |  |  |  | 720h |
| 35 | Ledger HW merges | 5d | 2026-11-25 | 2026-12-01 | 34 |  |  | 40h |
| 36 | Multisig dev | 45d | 2026-07-22 | 2026-09-22 |  |  |  | 360h |
| 37 | Multisig merges | 1d | 2026-09-23 | 2026-09-23 | 36 |  |  | 8h |
| 38 | Hot-cold dev | 5d | 2026-07-22 | 2026-07-28 |  |  |  | 40h |
| 39 | Hot-cold merges | 5d | 2026-07-29 | 2026-08-04 | 38 |  |  | 40h |
| 40 | Wallet knowledge dev | 5d | 2026-07-29 | 2026-08-04 | 38 |  |  | 40h |
| 41 | Wallet knowledge merges | 5d | 2026-08-05 | 2026-08-11 | 40 |  |  | 40h |
| 42 | Fully-featured merge | 1d | 2026-12-02 | 2026-12-02 | 30, 41, 39, 25, 37, 35, 33 |  |  | 8h |
| 43 | Fully-featured binary release | 5d | 2026-12-03 | 2026-12-09 | 42 |  |  | 40h |
| 44 | Pre-activation code freeze | 40d | 2026-12-03 | 2027-01-27 | 42 |  |  | 320h |
| 45 | FCMP++ activation | 1d | 2027-02-23 | 2027-02-23 | 44, 28 |  |  | 8h |

Notes:
- 5: https://github.com/monero-project/monero/pull/10359
- 6: https://github.com/monero-project/monero/pull/10360
- 7: https://github.com/monero-project/monero/pull/10361
- 8: https://github.com/monero-project/monero/pull/10362
- 9: https://github.com/monero-project/monero/pull/10724
- 14: https://github.com/monero-project/monero/pull/9559
- 15: https://github.com/seraphis-migration/monero/pull/427
- 16: https://github.com/monero-project/monero/pull/10934
- 17: https://github.com/monero-project/monero/pull/9697
- 18: https://github.com/monero-project/monero/pull/10995
